# Proyecto-004-HUACCANA

Schedule from MS Project, 2020-06-30 to 2020-08-25.

## Calendars

- Estándar: Mon-Fri 09:00-13:00, 15:00-19:00; Sat-Sun off.

## Resources

| Resource |
| --- |
| Ing. Ángel Américo Mendoza Navarro |
| Ing. Yovan NIÑO DE GUZMAN TORRE |
| Ing. Marco Antonio ARIZABAL ARRIAGA |

## Schedule

| ID | WBS | Task | Type | Duration | Start | Finish | Total slack | Constraint | Resources | Work |
| --- | --- | --- | --- | --- | --- | --- | --- | --- | --- | --- |
| 1 | 1 | **Mejoramiento de los Servicios de Salud del Centro de Salud Huaccana, Distrito de Huaccana, Provincia de Chincheros, Apurímac** |  | 41d | 2020-06-30 | 2020-08-25 | 0d |  |  | 832h |
| 2 | 1.1 | **Instalaciones Eléctricas** |  | 22d | 2020-06-30 | 2020-07-29 | 0d |  |  | 232h |
| 3 | 1.1.1 | **Situación Actual** |  | 5d | 2020-06-30 | 2020-07-06 | 0d |  |  | 40h |
| 4 | 1.1.1.1 | Informe de Evaluación del Estado de las Instalaciones Eléctricas (diagnostico) | manual | 4d | 2020-06-30 | 2020-07-03 |  |  | Ing. Yovan NIÑO DE GUZMAN TORRE | 32h |
| 5 | 1.1.1.2 | Solicitud de Factibilidad de Servicios a la Empresa Consecionaria | manual | 1d | 2020-07-06 | 2020-07-06 |  |  | Ing. Yovan NIÑO DE GUZMAN TORRE | 8h |
| 6 | 1.1.2 | **Situación Proyectada** |  | 18d | 2020-07-06 | 2020-07-29 | 0d |  |  | 192h |
| 7 | 1.1.2.1 | Memoria Descriptiva | manual | 3d | 2020-07-06 | 2020-07-08 |  |  | Ing. Yovan NIÑO DE GUZMAN TORRE | 24h |
| 8 | 1.1.2.2 | Cálculo estimado de las instalaciones eléctricas (Suministro Eléctrico, Tableros General y de distribución eléctrica, Sistema de iluminación exterior, interior, tomacorrientes, Sistema de fuerza, pararrayos y sistema de puesta a tierra y otros necesarios | manual | 5d | 2020-07-09 | 2020-07-15 |  |  | Ing. Yovan NIÑO DE GUZMAN TORRE | 40h |
| 9 | 1.1.2.3 | Especificaciones técnicas generales estipulados en el anteproyecto, con los cuales se sustentarán los costos de inversión, señalando los supuestos y metodología utilizada | manual | 5d | 2020-07-14 | 2020-07-20 |  |  | Ing. Yovan NIÑO DE GUZMAN TORRE | 40h |
| 10 | 1.1.2.4 | Cálculo del sistema de utilización en MT | manual | 5d | 2020-07-19 | 2020-07-23 |  |  | Ing. Yovan NIÑO DE GUZMAN TORRE | 40h |
| 11 | 1.1.2.5 | Planos de Instalaciones Eléctricas | manual | 3d | 2020-07-24 | 2020-07-28 |  |  | Ing. Yovan NIÑO DE GUZMAN TORRE | 24h |
| 12 | 1.1.2.6 | Costos de Operación y Mantenimiento de las Instalaciones Eléctricas | manual | 1d | 2020-07-27 | 2020-07-27 |  |  | Ing. Yovan NIÑO DE GUZMAN TORRE | 8h |
| 13 | 1.1.2.7 | Costos y Presupuesto de la especialidad Instalaciones Eléctricas | manual | 2d | 2020-07-28 | 2020-07-29 |  |  | Ing. Yovan NIÑO DE GUZMAN TORRE | 16h |
| 14 | 1.2 | **Instalaciones Mecánicas** |  | 23d | 2020-06-30 | 2020-07-30 | 0d |  |  |  |
| 15 | 1.2.1 | **Situación Actual (Diagnostico)** |  | 4d | 2020-06-30 | 2020-07-03 | 0d |  |  |  |
| 16 | 1.2.1.1 | Informe de Evaluación del Estado de las Instalaciones Mecánicas (diagnostico) | manual | 4d | 2020-06-30 | 2020-07-03 |  |  |  |  |
| 17 | 1.2.2 | **Situación Proyectada** |  | 19d | 2020-07-06 | 2020-07-30 | 0d |  |  |  |
| 18 | 1.2.2.1 | **1. Memoria Descriptiva** |  | 17d | 2020-07-06 | 2020-07-28 | 0d |  |  |  |
| 19 | 1.2.2.1.1 | 1.1 Sistema de gases medicinales, según corresponda | manual | 5d | 2020-07-06 | 2020-07-10 |  |  |  |  |
| 20 | 1.2.2.1.2 | 1.3 Sistema de combustible (Petróleo Diesel - GLP/Gas Natural), según corresponda | manual | 4d | 2020-07-13 | 2020-07-16 |  |  |  |  |
| 21 | 1.2.2.1.3 | 1.4 Sistema de circulación vertical (Ascensores: Público, montacamilla, montacargas, etc.), según corresponda | manual | 4d | 2020-07-15 | 2020-07-20 |  |  |  |  |
| 22 | 1.2.2.1.4 | 1.5 Sistema de aire acondicionado y Ventilación Mecánica | manual | 5d | 2020-07-20 | 2020-07-24 |  |  |  |  |
| 23 | 1.2.2.1.5 | 1.6 Sistema de grupo electrógeno (Suministro de combustible, tanque diario, tuberías, etc.) | manual | 2d | 2020-07-27 | 2020-07-28 |  |  |  |  |
| 24 | 1.2.2.2 | 2. Cálculo estimado de las instalaciones mecánicas (Sistema de gases medicinales, central de vacío, aire acondicionado y otros) y equipos mecánicos necesarios | manual | 1d | 2020-07-29 | 2020-07-29 |  |  |  |  |
| 25 | 1.2.2.3 | 3. Especificaciones técnicas generales estipulados en el anteproyecto, con los cuales se sustentarán los costos de inversión, señalando los supuestos y metodología utilizada | manual | 1d | 2020-07-27 | 2020-07-27 |  |  |  |  |
| 26 | 1.2.2.4 | 4. Planos de Instalaciones Mecánicas | manual | 2d | 2020-07-29 | 2020-07-30 |  |  |  |  |
| 27 | 1.2.2.5 | 5. Costos de operación y mantenimiento de las Instalaciones Mecánicas |  | 1d | 2020-07-29 | 2020-07-29 | 19d | start no earlier than 2020-07-29 |  |  |
| 28 | 1.2.2.6 | 6. Costos y Presupuesto de la especialidad Instalaciones Mecánicas | manual | 1d | 2020-07-29 | 2020-07-29 |  |  |  |  |

| ID | WBS | Task | Type | Duration | Start | Finish | Predecessors | Total slack | Resources | Work |
| --- | --- | --- | --- | --- | --- | --- | --- | --- | --- | --- |
| 29 | 1.3 | **Instalaciones Para El Sistema De Las Tecnologías De La Información Y Comunicaciones** |  | 22d | 2020-06-30 | 2020-07-29 |  | 0d |  | 312h |
| 30 | 1.3.1 | **Situación Actual** |  | 5d | 2020-06-30 | 2020-07-06 |  | 0d |  | 40h |
| 31 | 1.3.1.1 | Informe de Evaluación del Estado de las Instalaciones informáticas y comunicaciones (diagnostico) | manual | 4d | 2020-06-30 | 2020-07-03 |  |  | Ing. Marco Antonio ARIZABAL ARRIAGA | 32h |
| 32 | 1.3.1.2 | Solicitud de factibilidad del servicio ante la autoridad y/o concesionario correspondiente | manual | 1d | 2020-07-06 | 2020-07-06 | 31 |  | Ing. Marco Antonio ARIZABAL ARRIAGA | 8h |
| 33 | 1.3.2 | **Situación Proyectada** |  | 17d | 2020-07-07 | 2020-07-29 |  | 0d | Ing. Marco Antonio ARIZABAL ARRIAGA | 272h |
| 34 | 1.3.2.1 | Memoria Descriptiva | manual | 3d | 2020-07-07 | 2020-07-09 | 32 |  | Ing. Marco Antonio ARIZABAL ARRIAGA | 24h |
| 35 | 1.3.2.2 | Descripción del sistema de cableado estructurado de voz, data y video. Sistema de red inalámbrica. Sistemas de cámaras de seguridad. Sistema de llamadas de enfermeras. Sistemas de sonido ambiental y perifoneo. Sistemas de control de acceso y seguridad. | manual | 4d | 2020-07-10 | 2020-07-15 | 34 |  | Ing. Marco Antonio ARIZABAL ARRIAGA | 32h |
| 36 | 1.3.2.3 | Especificaciones técnicas generales estipulados en el anteproyecto, con los cuales se sustentarán los costos de inversión, señalando los supuestos y metodología utilizada | manual | 3d | 2020-07-16 | 2020-07-20 | 35 |  | Ing. Marco Antonio ARIZABAL ARRIAGA | 24h |
| 37 | 1.3.2.4 | Planos de Instalaciones informáticas y de telecomunicaciones | manual | 4d | 2020-07-21 | 2020-07-24 | 36 |  | Ing. Marco Antonio ARIZABAL ARRIAGA | 32h |
| 38 | 1.3.2.5 | Costos de Operación y Mantenimiento de las Instalaciones informáticas y telecomunicaciones | manual | 1d | 2020-07-27 | 2020-07-27 | 37 |  | Ing. Marco Antonio ARIZABAL ARRIAGA | 8h |
| 39 | 1.3.2.6 | Costos y Presupuestos de la especialidad Instalaciones informáticas y comunicaciones | manual | 2d | 2020-07-28 | 2020-07-29 | 38 |  | Ing. Marco Antonio ARIZABAL ARRIAGA | 16h |
| 40 | 1.4 | **Memoria De Estructuras** |  | 37d | 2020-07-06 | 2020-08-25 |  | 0d |  | 288h |
| 41 | 1.4.1 | **Situación Proyectada** |  | 37d | 2020-07-06 | 2020-08-25 |  | 0d |  | 288h |
| 42 | 1.4.1.1 | **1. Memoria Descriptiva** |  | 31d | 2020-07-06 | 2020-08-17 |  | 0d |  | 224h |
| 43 | 1.4.1.1.1 | **1.1 Descripción del sistema estructural de acuerdo a las normas técnicas del Reglamento Nacional de Edificaciones vigente** |  | 29d | 2020-07-06 | 2020-08-13 |  | 0d |  | 208h |
| 44 | 1.4.1.1.1.1 | 1.1.1 Descripción del tipo de cimentación recomendado, señalando los resultados del EMS de los parámetros físicos y mecánicos del suelo, profundidad de desplante, asentamientos totales y diferenciales esperados. (diseño de cimentación) | manual | 4d | 2020-07-06 | 2020-07-09 |  |  | Ing. Ángel Américo Mendoza Navarro | 32h |
| 45 | 1.4.1.1.1.2 | 1.1.2 Descripción del sistema estructural, los elementos estructurales que lo conformarán y el sistema de protección sísmica empleado (incluye cálculos preliminares sobre aisladores y especificaciones técnicas generales, consideradas en el anteproyecto, c | manual | 12d | 2020-07-10 | 2020-07-27 | 44 |  | Ing. Ángel Américo Mendoza Navarro | 96h |
| 46 | 1.4.1.1.1.3 | 1.1.3 Desplazamientos laterales máximos esperados según sistema de protección empleado (obras exteriores) | manual | 6d | 2020-07-28 | 2020-08-04 | 45 |  | Ing. Ángel Américo Mendoza Navarro | 48h |
| 47 | 1.4.1.1.1.4 | 1.1.4 Recomendación de las características físicas y mecánicas del concreto, acero, ladrillo u otros materiales de construcción que conforman a los elementos estructurales, y las consideraciones de diseño, funcionalidad y durabilidad para estos materiales | manual | 4d | 2020-08-10 | 2020-08-13 | 46 |  | Ing. Ángel Américo Mendoza Navarro | 32h |
| 48 | 1.4.1.1.2 | 1.2 Recomendaciones técnicas para el diseño de la estructura de acuerdo a lo estipulado en el Decreto Supremo 02-2014 “Aislamiento y Disipación de Energía Sísmica” (*) (**) | manual | 2d | 2020-08-14 | 2020-08-17 | 47 |  | Ing. Ángel Américo Mendoza Navarro | 16h |
| 49 | 1.4.1.2 | 2. Consideraciones generales | manual | 1d | 2020-08-18 | 2020-08-18 | 48 |  | Ing. Ángel Américo Mendoza Navarro | 8h |
| 50 | 1.4.1.3 | 3. Planos de Estructuras preliminares que muestren los elementos estructurales principales, acorde con el predimensionamiento efectuado | manual | 7d | 2020-08-17 | 2020-08-25 |  |  | Ing. Ángel Américo Mendoza Navarro | 56h |
| 51 | 1.5 | **MEMORIA DE ARQUITECTURA** |  | 6d | 2020-06-30 | 2020-07-07 |  | 0d |  |  |
| 52 | 1.5.1 | **Situación Proyectada** |  | 6d | 2020-06-30 | 2020-07-07 |  | 0d |  |  |
| 53 | 1.5.1.1 | Documentos que acrediten título de propiedad u otro documento que respalde el saneamiento físico legal (Documento original con fecha de expedición no mayor a 4 meses) del terreno seleccionado | manual | 2d | 2020-06-30 | 2020-07-01 |  |  |  |  |
| 54 | 1.5.1.2 | Certificado de Parámetros Urbanísticos y Edificatorios, de acuerdo a la norma NT GE.010, “Condiciones generales de diseño” artículo N° 04 del Reglamento Nacional de Edificaciones vigente. (Emisión no mayor a 4 meses) | manual | 2d | 2020-07-06 | 2020-07-07 |  |  |  |  |
| 55 | 1.5.1.3 | Propuesta de Programa Arquitectónico (que incluya % muros y circulaciones) | milestone, manual | 0d | 2020-06-30 | 2020-06-30 |  |  |  |  |
| 56 | 1.5.1.4 | Plano de ubicación y localización de la propuesta. Indicar las medidas perimétricas del terreno, y su concordancia con lo indicado en el título de propiedad. | milestone, manual | 0d | 2020-06-30 | 2020-06-30 |  |  |  |  |
| 57 | 1.5.1.5 | Cuadro comparativo de los parámetros urbanísticos y edificatorios, con los índices resultantes del proyecto | manual | 2d | 2020-06-30 | 2020-07-01 |  |  |  |  |
| 58 | 1.5.1.6 | Memoria Descriptiva de Arquitectura | manual | 3d | 2020-06-30 | 2020-07-02 |  |  |  |  |
| 59 | 1.5.1.7 | Descripción del planteamiento técnico arquitectónico del proyecto | manual | 3d | 2020-06-30 | 2020-07-02 |  |  |  |  |
| 60 | 1.5.1.8 | Programa arquitectónico | milestone, manual | 0d | 2020-06-30 | 2020-06-30 |  |  |  |  |
| 61 | 1.5.1.9 | Organigrama funcional | manual | 5d | 2020-06-30 | 2020-07-06 |  |  |  |  |
| 62 | 1.5.1.10 | Anteproyecto de arquitectura | milestone, manual | 0d | 2020-06-30 | 2020-06-30 |  |  |  |  |
| 63 | 1.5.1.11 | Esquema de flujos y circulaciones | manual | 4d | 2020-06-30 | 2020-07-03 |  |  |  |  |
| 64 | 1.5.1.12 | Cortes esquemáticos de la propuesta volumétrica sobre la topografía del terreno | manual | 4d | 2020-06-30 | 2020-07-03 |  |  |  |  |
| 65 | 1.5.1.13 | Plan de Contingencia | manual | 5d | 2020-06-30 | 2020-07-06 |  |  |  |  |
